# Children's Book Schedule

Schedule from MS Project, 2012-05-28 to 2015-11-26, costs in $, A marks actual dates.
Lucerne Publishing

## Calendars

- Standard: Mon-Fri 08:00-12:00, 13:00-17:00; Sat-Sun off.
- Monday-Wednesday: Mon-Wed 08:00-12:00, 13:00-17:00; Thu-Sun off.

## Resources

| Resource | Group | Unit | Rate |
| --- | --- | --- | --- |
| Nguyễn A | Editorial |  | 52.5 |
| Biên tập bản sao | Editorial |  | 45 |
| Nguyễn B | Design |  | 75.5 |
| Nguyễn C | Editorial |  | 38.75 |
| Nguyễn D | Editorial |  | 63.25 |
| Nguyễn Tài | Editorial |  | 42 |
| Võ Anh Kiệt | Design |  | 70 |
| Dịch vụ in ấn | Production |  |  |
| Travel | Other |  |  |
| Nguyễn Hài | Other |  |  |
| Dịch vụ thiết lập màu | Production |  |  |
| Bound galley proofs | Production | copies | 15 |

## Schedule

| ID | WBS | Task | Type | Duration | Start | Finish | Predecessors | Complete | Remaining | Baseline start | Baseline finish | Baseline duration | Total slack | Free slack | Constraint | Deadline | Resources | Work | Actual work | Cost | Baseline cost | Actual cost | Editorial Focus |
| --- | --- | --- | --- | --- | --- | --- | --- | --- | --- | --- | --- | --- | --- | --- | --- | --- | --- | --- | --- | --- | --- | --- | --- |
| 1 | 1 | **Họp nhân viên biên tập** |  | 780.12d | 2012-05-28 08:00 A | 2015-05-25 09:00 |  | 54% | 360.06d | 2015-04-13 08:00 | 2015-07-06 09:00 | 60.12d | 133.88d |  |  |  |  | 45.5h | 24.5h | 2,223 | 2,223 | 1,197 |  |
| 2 | 1.1 | Họp nhân viên biên tập 1 |  | 1h | 2015-04-13 08:00 A | 2015-04-13 09:00 A |  | 100% |  | 2015-04-13 08:00 | 2015-04-13 09:00 | 1h |  |  | start no earlier than 2015-04-13 08:00 |  | Nguyễn A; Nguyễn Tài; Nguyễn C; Nguyễn B [50%] | 3.5h | 3.5h | 171 | 171 | 171 |  |
| 3 | 1.2 | Họp nhân viên biên tập 2 |  | 1h | 2015-04-20 08:00 A | 2015-04-20 09:00 A |  | 100% |  | 2015-04-20 08:00 | 2015-04-20 09:00 | 1h |  |  | start no earlier than 2015-04-20 08:00 |  | Nguyễn A; Nguyễn Tài; Nguyễn C; Nguyễn B [50%] | 3.5h | 3.5h | 171 | 171 | 171 |  |
| 4 | 1.3 | Họp nhân viên biên tập 3 |  | 1h | 2015-04-27 08:00 A | 2015-04-27 09:00 A |  | 100% |  | 2015-04-27 08:00 | 2015-04-27 09:00 | 1h |  |  | start no earlier than 2015-04-27 08:00 |  | Nguyễn A; Nguyễn Tài; Nguyễn C; Nguyễn B [50%] | 3.5h | 3.5h | 171 | 171 | 171 |  |
| 5 | 1.4 | Họp nhân viên biên tập 4 |  | 1h | 2015-05-04 08:00 A | 2015-05-04 09:00 A |  | 100% |  | 2015-05-04 08:00 | 2015-05-04 09:00 | 1h |  |  | start no earlier than 2015-05-04 08:00 |  | Nguyễn A; Nguyễn Tài; Nguyễn C; Nguyễn B [50%] | 3.5h | 3.5h | 171 | 171 | 171 |  |
| 6 | 1.5 | Họp nhân viên biên tập 5 |  | 1h | 2015-05-11 08:00 A | 2015-05-11 09:00 A |  | 100% |  | 2015-05-11 08:00 | 2015-05-11 09:00 | 1h |  |  | start no earlier than 2015-05-11 08:00 |  | Nguyễn A; Nguyễn Tài; Nguyễn C; Nguyễn B [50%] | 3.5h | 3.5h | 171 | 171 | 171 |  |
| 7 | 1.6 | Họp nhân viên biên tập 6 |  | 1h | 2015-05-18 08:00 A | 2015-05-18 09:00 A |  | 100% |  | 2015-05-18 08:00 | 2015-05-18 09:00 | 1h |  |  | start no earlier than 2015-05-18 08:00 |  | Nguyễn A; Nguyễn Tài; Nguyễn C; Nguyễn B [50%] | 3.5h | 3.5h | 171 | 171 | 171 |  |
| 8 | 1.7 | Họp nhân viên biên tập 7 |  | 1h | 2015-05-25 08:00 A | 2015-05-25 09:00 A |  | 100% |  | 2015-05-25 08:00 | 2015-05-25 09:00 | 1h |  |  | start no earlier than 2015-05-25 08:00 |  | Nguyễn A; Nguyễn Tài; Nguyễn C; Nguyễn B [50%] | 3.5h | 3.5h | 171 | 171 | 171 |  |
| 9 | 1.8 | Họp nhân viên biên tập 8 |  | 1h | 2012-05-28 08:00 | 2012-05-28 09:00 |  |  |  | 2015-06-01 08:00 | 2015-06-01 09:00 | 1h | 913.88d |  | start no earlier than 2012-05-28 08:00 |  | Nguyễn A; Nguyễn Tài; Nguyễn C; Nguyễn B [50%] | 3.5h |  | 171 | 171 |  |  |
| 10 | 1.9 | Họp nhân viên biên tập 9 |  | 1h | 2012-06-04 08:00 | 2012-06-04 09:00 |  |  |  | 2015-06-08 08:00 | 2015-06-08 09:00 | 1h | 908.88d |  | start no earlier than 2012-06-04 08:00 |  | Nguyễn A; Nguyễn Tài; Nguyễn C; Nguyễn B [50%] | 3.5h |  | 171 | 171 |  |  |
| 11 | 1.10 | Họp nhân viên biên tập 10 |  | 1h | 2012-06-11 08:00 | 2012-06-11 09:00 |  |  |  | 2015-06-15 08:00 | 2015-06-15 09:00 | 1h | 903.88d |  | start no earlier than 2012-06-11 08:00 |  | Nguyễn A; Nguyễn Tài; Nguyễn C; Nguyễn B [50%] | 3.5h |  | 171 | 171 |  |  |
| 12 | 1.11 | Họp nhân viên biên tập 11 |  | 1h | 2012-06-18 08:00 | 2012-06-18 09:00 |  |  |  | 2015-06-22 08:00 | 2015-06-22 09:00 | 1h | 898.88d |  | start no earlier than 2012-06-18 08:00 |  | Nguyễn A; Nguyễn Tài; Nguyễn C; Nguyễn B [50%] | 3.5h |  | 171 | 171 |  |  |
| 13 | 1.12 | Họp nhân viên biên tập 12 |  | 1h | 2012-06-25 08:00 | 2012-06-25 09:00 |  |  |  | 2015-06-29 08:00 | 2015-06-29 09:00 | 1h | 893.88d |  | start no earlier than 2012-06-25 08:00 |  | Nguyễn A; Nguyễn Tài; Nguyễn C; Nguyễn B [50%] | 3.5h |  | 171 | 171 |  |  |
| 14 | 1.13 | Họp nhân viên biên tập 13 |  | 1h | 2012-07-02 08:00 | 2012-07-02 09:00 |  |  |  | 2015-07-06 08:00 | 2015-07-06 09:00 | 1h | 888.88d |  | start no earlier than 2012-07-02 08:00 |  | Nguyễn A; Nguyễn Tài; Nguyễn C; Nguyễn B [50%] | 3.5h |  | 171 | 171 |  |  |
| 15 | 2 | **Sự tiếp nhận** |  | 37d | 2015-04-06 08:00 A | 2015-05-26 17:00 A |  | 100% |  | 2015-04-06 08:00 | 2015-05-25 12:00 | 35.5d |  |  |  |  |  | 468h | 468h | 18,804 | 18,264 | 18,804 |  |
| 16 | 2.1 | Nhận bản thảo | milestone | 0d | 2015-04-06 08:00 A | 2015-04-06 08:00 A |  | 100% |  | 2015-04-06 08:00 | 2015-04-06 08:00 | 0d |  |  |  |  |  |  |  |  |  |  |  |
| 17 | 2.2 | Biên tập nội dung |  | 15d | 2015-04-06 08:00 A | 2015-04-30 10:00 A | 16 | 100% |  | 2015-04-06 08:00 | 2015-04-30 10:00 | 15d |  |  |  |  | Nguyễn A | 120h | 120h | 6,300 | 6,300 | 6,300 | Full developmental edit |
| 18 | 2.3 | Đánh giá tác phẩm gốc |  | 10.25d | 2015-04-23 10:00 A | 2015-05-07 12:00 A | 17FS-5d | 100% |  | 2015-04-23 10:00 | 2015-05-07 12:00 | 10.25d |  |  |  |  | Nguyễn C; Nguyễn D | 164h | 164h | 8,364 | 8,364 | 8,364 |  |
| 19 | 2.4 | Đánh giá của tác giả về nội dung biên tập |  | 13.5d | 2015-05-07 13:00 A | 2015-05-26 17:00 A | 17, 18 | 100% |  | 2015-05-07 13:00 | 2015-05-25 12:00 | 12d |  |  |  |  | Nguyễn Hài; Biên tập bản sao | 184h | 184h | 4,140 | 3,600 | 4,140 | Incorp must-fix issues |
| 20 | 2.5 | Bàn giao cho bôj phận biên tập | milestone | 0d | 2015-05-26 17:00 A | 2015-05-26 17:00 A | 19 | 100% |  | 2015-05-25 12:00 | 2015-05-25 12:00 | 0d |  |  |  | 2015-05-29 17:00 | Nguyễn A |  |  |  |  |  |  |
| 21 | 3 | **Biên tập** |  | 28d | 2015-05-27 08:00 A | 2015-07-03 17:00 | 15 | 50% | 13.94d | 2015-05-25 13:00 | 2015-07-03 14:00 | 29.12d | 3.25d | 0d |  |  |  | 411h | 251h | 16,183 | 15,670 | 11,673 |  |
| 22 | 3.1 | Sắp xếp bản thảo cho bản sao |  | 5d | 2015-05-27 08:00 A | 2015-06-02 17:00 A |  | 100% |  | 2015-05-25 13:00 | 2015-06-01 14:00 | 5.12d |  |  |  |  | Nguyễn C; Nguyễn B [50%] | 63h | 63h | 3,213 | 3,060 | 3,213 | Address outstanding line edit issues |
| 23 | 3.2 | Bản sao |  | 10.25d | 2015-06-03 08:00 A | 2015-06-17 10:00 A | 22 | 100% |  | 2015-06-01 14:00 | 2015-06-16 16:00 | 11.25d |  |  |  |  | Biên tập bản sao [200%] | 188h | 188h | 8,460 | 8,100 | 8,460 | Style Guide compliance |
| 24 | 3.3 | Đánh giá của tác giả về bản sao |  | 10d | 2015-06-17 10:00 | 2015-07-01 10:00 | 23 |  |  | 2015-06-16 16:00 | 2015-06-30 16:00 | 10d | 1.75d | 0d |  |  | Nguyễn Hài; Biên tập bản sao [25%] | 100h |  | 900 | 900 |  | Incorp must-fix issues |
| 25 | 3.4 | Kết hợp bản sao |  | 5.12d | 2015-06-26 15:00 | 2015-07-03 17:00 | 24FS-2.5% |  |  | 2015-06-26 11:00 | 2015-07-03 14:00 | 5.12d | 1.75d | 0d |  |  | Nguyễn A; Nguyễn B [50%] | 60h |  | 3,610 | 3,610 |  | Incorp must-fix issues |
| 26 | 3.5 | Bàn giao cho bộ phận sản xuất | milestone | 0d | 2015-07-03 17:00 | 2015-07-03 17:00 | 25 |  |  | 2015-07-03 14:00 | 2015-07-03 14:00 | 0d | 1.75d |  |  |  | Nguyễn C |  |  |  |  |  |  |

| ID | WBS | Task | Type | Duration | Start | Finish | Predecessors | Baseline start | Baseline finish | Baseline duration | Total slack | Free slack | Constraint | Calendar | Resources | Work | Cost | Baseline cost |
| --- | --- | --- | --- | --- | --- | --- | --- | --- | --- | --- | --- | --- | --- | --- | --- | --- | --- | --- |
| 27 | 4 | **Thiết kế và sản xuất** |  | 58d | 2015-07-06 08:00 | 2015-09-23 17:00 | 21 | 2015-07-03 14:00 | 2015-09-23 16:00 | 58.25d | 2d |  |  |  |  | 888h | 46,679 | 46,679 |
| 28 | 4.1 | Thiết lập trang |  | 15d | 2015-07-06 08:00 | 2015-07-24 17:00 |  | 2015-07-03 14:00 | 2015-07-24 14:00 | 15d | 1.75d | 0d |  |  | Nguyễn D | 120h | 7,590 | 7,590 |
| 29 | 4.2 | Thiết kế nội dung minh họa |  | 15.25d | 2015-07-06 08:00 | 2015-07-27 10:00 | 28SS | 2015-07-03 14:00 | 2015-07-24 16:00 | 15.25d | 1.75d | 0d |  |  | Võ Anh Kiệt; Nguyễn C | 240h | 13,050 | 13,050 |
| 30 | 4.3 | **Đánh giá trang thứ nhất** |  | 30d | 2015-07-27 10:00 | 2015-09-07 10:00 | 29 | 2015-07-24 16:00 | 2015-09-04 16:00 | 30d | 3.25d | 0d |  |  |  | 320h | 13,860 | 13,860 |
| 31 | 4.3.1 | Hiệu đính và lập chỉ mục |  | 10d | 2015-07-27 10:00 | 2015-08-10 10:00 |  | 2015-07-24 16:00 | 2015-08-07 16:00 | 10d | 3.25d | 0d | start no earlier than 2015-07-17 08:00 |  | Nguyễn Hài; Biên tập bản sao | 100h | 900 | 900 |
| 32 | 4.3.2 | Kết hợp đánh giá Trang 1 |  | 10d | 2015-08-10 10:00 | 2015-08-24 10:00 | 31 | 2015-08-07 16:00 | 2015-08-21 16:00 | 10d | 3.25d | 0d |  |  | Nguyễn C; Nguyễn B [50%] | 120h | 6,120 | 6,120 |
| 33 | 4.3.3 | Gửi các trang đã được kiểm tra đến Sản xuất | milestone | 0d | 2015-08-24 10:00 | 2015-08-24 10:00 | 32 | 2015-08-21 16:00 | 2015-08-21 16:00 | 0d | 3.25d | 0d |  |  | Nguyễn C |  |  |  |
| 34 | 4.3.4 | Nhập sửa trang và chỉ mục |  | 5d | 2015-08-24 10:00 | 2015-08-31 10:00 | 33 | 2015-08-21 16:00 | 2015-08-28 16:00 | 5d | 3.25d | 0d |  |  | Nguyễn D; Nguyễn B [50%] | 60h | 4,040 | 4,040 |
| 35 | 4.3.5 | Thiết kế bìa |  | 5d | 2015-08-31 10:00 | 2015-09-07 10:00 | 34 | 2015-08-28 16:00 | 2015-09-04 16:00 | 5d | 3.25d | 0d |  |  | Võ Anh Kiệt | 40h | 2,800 | 2,800 |
| 36 | 4.4 | **Đánh giá trang 2** |  | 12.75d | 2015-09-07 10:00 | 2015-09-23 17:00 |  | 2015-09-04 16:00 | 2015-09-23 16:00 | 13d | 2d |  |  |  |  | 120h | 6,345 | 6,345 |
| 37 | 4.4.1 | Bằng chứng và đánh giá |  | 6.5d | 2015-09-07 10:00 | 2015-09-15 15:00 | 35 | 2015-09-04 16:00 | 2015-09-15 11:00 | 6.5d | 3.25d | 0d |  |  | Nguyễn C | 40h | 1,800 | 1,800 |
| 38 | 4.4.2 | Gửi các trang đã được kiểm tra đến Sản xuất | milestone | 0d | 2015-09-15 15:00 | 2015-09-15 15:00 | 37 | 2015-09-15 11:00 | 2015-09-15 11:00 | 0d | 3.25d | 0.25d |  |  | Nguyễn C |  |  |  |
| 39 | 4.4.3 | Đánh giá cuối cùng |  | 5d | 2015-09-17 08:00 | 2015-09-23 17:00 | 38 | 2015-09-16 16:00 | 2015-09-23 16:00 | 5d | 2d |  |  |  | Nguyễn D; Nguyễn C [50%]; Nguyễn A [50%]; Bound galley proofs [20 copies] | 80h | 4,545 | 4,545 |
| 40 | 4.5 | **Trang web đồng hành của sách thiết kế** |  | 10d | 2015-09-07 10:00 | 2015-09-21 10:00 | 30 | 2015-09-04 16:00 | 2015-09-18 16:00 | 10d | 4.75d |  |  |  |  | 88h | 5,834 | 5,834 |
| 41 | 4.5.1 | Tạo mô hình |  | 4.5d | 2015-09-07 10:00 | 2015-09-17 10:00 |  | 2015-09-04 16:00 | 2015-09-16 16:00 | 4.5d | 4.75d | 0d |  |  | Võ Anh Kiệt; Nguyễn C | 48h | 2,610 | 2,610 |
| 42 | 4.5.2 | Đánh giá với tác giả |  | 2d | 2015-09-17 10:00 | 2015-09-21 10:00 | 41 | 2015-09-16 16:00 | 2015-09-18 16:00 | 2d | 4.75d |  |  |  | Võ Anh Kiệt; Nguyễn Hài; Travel [0.1%]; Nguyễn B [50%] | 40h | 3,224 | 3,224 |
| 43 | 5 | **Chuẩn bị màu và in ấn** |  | 44d | 2015-09-28 08:00 | 2015-11-26 17:00 | 40 | 2015-09-23 16:00 | 2015-11-26 16:00 | 46d | 0d |  |  |  |  | 328h | 5,310 | 5,310 |
| 44 | 5.1 | Gửi đến nhà màu |  | 1d | 2015-09-28 08:00 | 2015-09-28 17:00 | 36 | 2015-09-23 16:00 | 2015-09-28 16:00 | 1d | 0d |  |  | Monday-Wednesday | Nguyễn C | 8h | 310 | 310 |
| 45 | 5.2 | Tạo bằng chứng |  | 10d | 2015-09-29 08:00 | 2015-10-12 17:00 | 44 | 2015-09-28 16:00 | 2015-10-12 16:00 | 10d | 0d |  |  |  | Dịch vụ thiết lập màu | 80h | 5,000 | 5,000 |
| 46 | 5.3 | In và gửi |  | 30d | 2015-10-16 08:00 | 2015-11-26 17:00 | 45FS+3d | 2015-10-15 16:00 | 2015-11-26 16:00 | 30d | 0d |  |  |  | Dịch vụ in ấn | 240h |  |  |
| 47 | 6 | **Chuẩn bị ra mắt sách** |  | 22d | 2015-09-29 08:00 | 2015-10-28 17:00 |  | 2015-09-28 16:00 | 2015-10-28 16:00 | 22d | 21d |  |  |  |  | 212h | 9,442 | 9,442 |
| 48 | 6.1 | Kế hoạch ra mắt |  | 5d | 2015-09-29 08:00 | 2015-10-05 17:00 | 44 | 2015-09-28 16:00 | 2015-10-05 16:00 | 5d | 21d | 0d |  |  | Nguyễn A [50%]; Nguyễn D | 36h | 2,062 | 2,062 |
| 49 | 6.2 | Chỉ định các thành viên nhóm ra mắt |  | 1d | 2015-10-06 08:00 | 2015-10-06 17:00 | 48 | 2015-10-05 16:00 | 2015-10-06 16:00 | 1d | 21d | 0d |  |  | Nguyễn A | 8h | 420 | 420 |
| 50 | 6.3 | Hoàn thành bảng câu hỏi của tác giả |  | 5d | 2015-10-07 08:00 | 2015-10-13 17:00 | 49 | 2015-10-06 16:00 | 2015-10-13 16:00 | 5d | 21d | 0d |  |  | Nguyễn C; Nguyễn Hài; Travel [0.1%] | 80h | 3,550 | 3,550 |
| 51 | 6.4 | Lên lịch phỏng vấn tác giả |  | 1d | 2015-10-14 08:00 | 2015-10-14 17:00 | 50 | 2015-10-13 16:00 | 2015-10-14 16:00 | 1d | 21d | 0d |  |  | Nguyễn C | 8h | 310 | 310 |
| 52 | 6.5 | Thiết kế và đặt hàng tài liệu tiếp thị |  | 10d | 2015-10-15 08:00 | 2015-10-28 17:00 | 51 | 2015-10-14 16:00 | 2015-10-28 16:00 | 10d | 21d |  |  |  | Nguyễn C | 80h | 3,100 | 3,100 |
