# Children's Book Schedule

Schedule from MS Project, 2015-04-06 to 2015-12-03, costs in $, A marks actual dates.
Lucerne Publishing

## Calendars

- Standard: Mon-Fri 08:00-12:00, 13:00-17:00; Sat-Sun off.
- Monday-Wednesday: Mon-Wed 08:00-12:00, 13:00-17:00; Thu-Sun off.

## Resources

| Resource | Group | Unit | Rate |
| --- | --- | --- | --- |
| Nguyễn Văn A | Editorial |  | 52.5 |
| Sửa bản sao | Editorial |  | 45 |
| Nguyễn Văn B | Design |  | 75.5 |
| Phạm Tấn Trung | Editorial |  | 38.75 |
| Phạm Tuân | Editorial |  | 63.25 |
| Cao Văn Toàn | Editorial |  | 42 |
| Phạm Hoại | Design |  | 70 |
| Dịch vụ in ấn | Production |  |  |
| Travel | Other |  |  |
| Nguyễn D | Other |  |  |
| Dịch vụ thiết lâpj màu | Production |  |  |
| Bound galley proofs | Production | copies | 15 |

## Schedule

| ID | WBS | Task | Type | Duration | Start | Finish | Predecessors | Complete | Remaining | Baseline start | Baseline finish | Baseline duration | Total slack | Constraint | Deadline | Resources | Work | Actual work | Cost | Baseline cost | Actual cost | Editorial Focus |
| --- | --- | --- | --- | --- | --- | --- | --- | --- | --- | --- | --- | --- | --- | --- | --- | --- | --- | --- | --- | --- | --- | --- |
| 1 | 1 | **Họp nhân viên biên tập** |  | 82.12d | 2015-04-13 A | 2015-08-05 |  | 37% | 51.87d | 2015-04-13 | 2015-07-06 | 60.12d | 86.88d |  |  |  | 45.5h | 24.5h | 2,223 | 2,223 | 1,197 |  |
| 2 | 1.1 | Họp nhân viên biên tập 1 |  | 1h | 2015-04-13 A | 2015-04-13 A |  | 100% |  | 2015-04-13 | 2015-04-13 | 1h |  | start no earlier than 2015-04-13 |  | Nguyễn Văn A; Cao Văn Toàn; Phạm Tấn Trung; Nguyễn Văn B [50%] | 3.5h | 3.5h | 171 | 171 | 171 |  |
| 3 | 1.2 | Họp nhân viên biên tập 2 |  | 1h | 2015-04-20 A | 2015-04-20 A |  | 100% |  | 2015-04-20 | 2015-04-20 | 1h |  | start no earlier than 2015-04-20 |  | Nguyễn Văn A; Cao Văn Toàn; Phạm Tấn Trung; Nguyễn Văn B [50%] | 3.5h | 3.5h | 171 | 171 | 171 |  |
| 4 | 1.3 | Họp nhân viên biên tập 3 |  | 1h | 2015-04-27 A | 2015-04-27 A |  | 100% |  | 2015-04-27 | 2015-04-27 | 1h |  | start no earlier than 2015-04-27 |  | Nguyễn Văn A; Cao Văn Toàn; Phạm Tấn Trung; Nguyễn Văn B [50%] | 3.5h | 3.5h | 171 | 171 | 171 |  |
| 5 | 1.4 | Họp nhân viên biên tập 4 |  | 1h | 2015-05-04 A | 2015-05-04 A |  | 100% |  | 2015-05-04 | 2015-05-04 | 1h |  | start no earlier than 2015-05-04 |  | Nguyễn Văn A; Cao Văn Toàn; Phạm Tấn Trung; Nguyễn Văn B [50%] | 3.5h | 3.5h | 171 | 171 | 171 |  |
| 6 | 1.5 | Họp nhân viên biên tập 5 |  | 1h | 2015-05-11 A | 2015-05-11 A |  | 100% |  | 2015-05-11 | 2015-05-11 | 1h |  | start no earlier than 2015-05-11 |  | Nguyễn Văn A; Cao Văn Toàn; Phạm Tấn Trung; Nguyễn Văn B [50%] | 3.5h | 3.5h | 171 | 171 | 171 |  |
| 7 | 1.6 | Họp nhân viên biên tập 6 |  | 1h | 2015-05-18 A | 2015-05-18 A |  | 100% |  | 2015-05-18 | 2015-05-18 | 1h |  | start no earlier than 2015-05-18 |  | Nguyễn Văn A; Cao Văn Toàn; Phạm Tấn Trung; Nguyễn Văn B [50%] | 3.5h | 3.5h | 171 | 171 | 171 |  |
| 8 | 1.7 | Họp nhân viên biên tập 7 |  | 1h | 2015-05-25 A | 2015-05-25 A |  | 100% |  | 2015-05-25 | 2015-05-25 | 1h |  | start no earlier than 2015-05-25 |  | Nguyễn Văn A; Cao Văn Toàn; Phạm Tấn Trung; Nguyễn Văn B [50%] | 3.5h | 3.5h | 171 | 171 | 171 |  |
| 9 | 1.8 | Họp nhân viên biên tập 8 |  | 2h | 2015-08-04 | 2015-08-05 |  |  |  | 2015-06-01 | 2015-06-01 | 1h | 86.88d | start no earlier than 2015-08-04 |  | Nguyễn Văn A; Cao Văn Toàn; Phạm Tấn Trung; Nguyễn Văn B [50%] | 3.5h |  | 171 | 171 |  |  |
| 10 | 1.9 | Họp nhân viên biên tập 9 |  | 2h | 2015-08-04 | 2015-08-05 |  |  |  | 2015-06-08 | 2015-06-08 | 1h | 86.88d | start no earlier than 2015-08-04 |  | Nguyễn Văn A; Cao Văn Toàn; Phạm Tấn Trung; Nguyễn Văn B [50%] | 3.5h |  | 171 | 171 |  |  |
| 11 | 1.10 | Họp nhân viên biên tập 10 |  | 2h | 2015-08-04 | 2015-08-05 |  |  |  | 2015-06-15 | 2015-06-15 | 1h | 86.88d | start no earlier than 2015-08-04 |  | Nguyễn Văn A; Cao Văn Toàn; Phạm Tấn Trung; Nguyễn Văn B [50%] | 3.5h |  | 171 | 171 |  |  |
| 12 | 1.11 | Họp nhân viên biên tập 11 |  | 2h | 2015-08-04 | 2015-08-05 |  |  |  | 2015-06-22 | 2015-06-22 | 1h | 86.88d | start no earlier than 2015-08-04 |  | Nguyễn Văn A; Cao Văn Toàn; Phạm Tấn Trung; Nguyễn Văn B [50%] | 3.5h |  | 171 | 171 |  |  |
| 13 | 1.12 | Họp nhân viên biên tập 12 |  | 2h | 2015-08-04 | 2015-08-05 |  |  |  | 2015-06-29 | 2015-06-29 | 1h | 86.88d | start no earlier than 2015-08-04 |  | Nguyễn Văn A; Cao Văn Toàn; Phạm Tấn Trung; Nguyễn Văn B [50%] | 3.5h |  | 171 | 171 |  |  |
| 14 | 1.13 | Họp nhân viên biên tập 13 |  | 2h | 2015-08-04 | 2015-08-05 |  |  |  | 2015-07-06 | 2015-07-06 | 1h | 86.88d | start no earlier than 2015-08-04 |  | Nguyễn Văn A; Cao Văn Toàn; Phạm Tấn Trung; Nguyễn Văn B [50%] | 3.5h |  | 171 | 171 |  |  |
| 15 | 2 | **Sự tiếp nhận** |  | 37d | 2015-04-06 A | 2015-05-26 A |  | 100% |  | 2015-04-06 | 2015-05-25 | 35.5d |  |  |  |  | 468h | 468h | 18,804 | 18,264 | 18,804 |  |
| 16 | 2.1 | Manuscript received | milestone | 0d | 2015-04-06 A | 2015-04-06 A |  | 100% |  | 2015-04-06 | 2015-04-06 | 0d |  |  |  |  |  |  |  |  |  |  |
| 17 | 2.2 | Content edit |  | 15d | 2015-04-06 A | 2015-04-30 A | 16 | 100% |  | 2015-04-06 | 2015-04-30 | 15d |  |  |  | Nguyễn Văn A | 120h | 120h | 6,300 | 6,300 | 6,300 | Full developmental edit |
| 18 | 2.3 | Original art review |  | 10.25d | 2015-04-23 A | 2015-05-07 A | 17FS-5d | 100% |  | 2015-04-23 | 2015-05-07 | 10.25d |  |  |  | Phạm Tấn Trung; Phạm Tuân | 164h | 164h | 8,364 | 8,364 | 8,364 |  |
| 19 | 2.4 | Author review of content edit |  | 13.5d | 2015-05-07 A | 2015-05-26 A | 17, 18 | 100% |  | 2015-05-07 | 2015-05-25 | 12d |  |  |  | Nguyễn D; Sửa bản sao | 184h | 184h | 4,140 | 3,600 | 4,140 | Incorp must-fix issues |
| 20 | 2.5 | Handoff to Editorial | milestone | 0d | 2015-05-26 A | 2015-05-26 A | 19 | 100% |  | 2015-05-25 | 2015-05-25 | 0d |  |  | 2015-05-29 | Nguyễn Văn A |  |  |  |  |  |  |
| 21 | 3 | **Biên tập** |  | 28.4d | 2015-05-27 A | 2015-07-06 A | 15 | 100% |  | 2015-05-25 | 2015-07-03 | 29.12d |  |  |  |  | 413h | 413h | 16,201 | 15,670 | 16,201 |  |
| 22 | 3.1 | Sắp xếp bản thảo cho bản sao |  | 5d | 2015-05-27 A | 2015-06-02 A |  | 100% |  | 2015-05-25 | 2015-06-01 | 5.12d |  |  |  | Phạm Tấn Trung; Nguyễn Văn B [50%] | 63h | 63h | 3,213 | 3,060 | 3,213 | Address outstanding line edit issues |
| 23 | 3.2 | Bản sao |  | 10.5d | 2015-06-03 A | 2015-06-17 A | 22 | 100% |  | 2015-06-01 | 2015-06-16 | 11.25d |  |  |  | Sửa bản sao [200%] | 188h | 188h | 8,460 | 8,100 | 8,460 | Style Guide compliance |
| 24 | 3.3 | Đánh giá của tác giả về bản sao |  | 10.2d | 2015-06-17 A | 2015-07-01 A | 23 | 100% |  | 2015-06-16 | 2015-06-30 | 10d |  |  |  | Nguyễn D; Sửa bản sao [25%] | 102h | 102h | 918 | 900 | 918 | Incorp must-fix issues |
| 25 | 3.4 | Kết hợp bản sao |  | 5.12d | 2015-06-29 A | 2015-07-06 A | 24FS-2.5% | 100% |  | 2015-06-26 | 2015-07-03 | 5.12d |  |  |  | Nguyễn Văn A; Nguyễn Văn B [50%] | 60h | 60h | 3,610 | 3,610 | 3,610 | Incorp must-fix issues |
| 26 | 3.5 | Bàn giao cho bộ phận sản xuất | milestone | 0d | 2015-07-06 A | 2015-07-06 A | 25 | 100% |  | 2015-07-03 | 2015-07-03 | 0d |  |  |  | Phạm Tấn Trung |  |  |  |  |  |  |

| ID | WBS | Task | Type | Duration | Start | Finish | Predecessors | Complete | Remaining | Baseline start | Baseline finish | Baseline duration | Total slack | Free slack | Constraint | Calendar | Resources | Work | Actual work | Cost | Baseline cost | Actual cost |
| --- | --- | --- | --- | --- | --- | --- | --- | --- | --- | --- | --- | --- | --- | --- | --- | --- | --- | --- | --- | --- | --- | --- |
| 27 | 4 | **Thiết kế và sản xuất** |  | 62.6d | 2015-07-06 A | 2015-09-30 | 21 | 30% | 43.9d | 2015-07-03 | 2015-09-23 | 58.25d | 2d |  |  |  |  | 948.4h | 431.6h | 50,179.1 | 46,679 | 23,544.5 |
| 28 | 4.1 | **Thiết lập trang** |  | 17.6d | 2015-07-06 A | 2015-07-29 |  | 99% | 0d | 2015-07-03 | 2015-07-24 | 15d | 0d |  |  |  | Phạm Tuân | 420.4h | 399.6h | 24,140.1 | 7,590 | 22,824.5 |
| 29 | 4.1.1 | Thiết kế nội dung minh họa |  | 17.6d | 2015-07-06 A | 2015-07-29 A |  | 100% |  | 2015-07-03 | 2015-07-24 | 15.25d |  |  |  |  | Phạm Hoại; Phạm Tấn Trung | 279.6h | 279.6h | 15,234.5 | 13,050 | 15,234.5 |
| 30 | 4.2 | **Đánh giá các trang lần thứ nhất** |  | 32d | 2015-07-30 A | 2015-09-11 | 29 | 7% | 29.87d | 2015-07-24 | 2015-09-04 | 30d | 3.5d | 0d |  |  |  | 320h | 32h | 13,860 | 13,860 | 720 |
| 31 | 4.2.1 | Hiệu đính và lập chỉ mục |  | 10d | 2015-07-30 A | 2015-08-14 |  | 20% | 8d | 2015-07-24 | 2015-08-07 | 10d | 3.5d | 0d | start no earlier than 2015-07-17 |  | Nguyễn D; Sửa bản sao | 100h | 32h | 900 | 900 | 720 |
| 32 | 4.2.2 | Kết hợp đánh giá các trang lần thứ nhất |  | 10d | 2015-08-17 | 2015-08-28 | 31 |  |  | 2015-08-07 | 2015-08-21 | 10d | 3.5d | 0d |  |  | Phạm Tấn Trung; Nguyễn Văn B [50%] | 120h |  | 6,120 | 6,120 |  |
| 33 | 4.2.3 | Gửi các trang đã được hiệu đính đến bộ phận sản xuất | milestone | 0d | 2015-08-28 | 2015-08-28 | 32 |  |  | 2015-08-21 | 2015-08-21 | 0d | 3.5d | 0d |  |  | Phạm Tấn Trung |  |  |  |  |  |
| 34 | 4.2.4 | Nhập các chỉnh sửa trang và chỉ mục |  | 5d | 2015-08-31 | 2015-09-04 | 33 |  |  | 2015-08-21 | 2015-08-28 | 5d | 3.5d | 0d |  |  | Phạm Tuân; Nguyễn Văn B [50%] | 60h |  | 4,040 | 4,040 |  |
| 35 | 4.2.5 | Thiết kế trang bìa |  | 5d | 2015-09-07 | 2015-09-11 | 34 |  |  | 2015-08-28 | 2015-09-04 | 5d | 3.5d | 0d |  |  | Phạm Hoại | 40h |  | 2,800 | 2,800 |  |
| 36 | 4.3 | **Đánh giá các trang lần thứ 2** |  | 13d | 2015-09-14 | 2015-09-30 |  |  |  | 2015-09-04 | 2015-09-23 | 13d | 2d |  |  |  |  | 120h |  | 6,345 | 6,345 |  |
| 37 | 4.3.1 | Bằng chứng và đánh giá |  | 6.5d | 2015-09-14 | 2015-09-22 | 35 |  |  | 2015-09-04 | 2015-09-15 | 6.5d | 3.5d | 0d |  |  | Phạm Tấn Trung | 40h |  | 1,800 | 1,800 |  |
| 38 | 4.3.2 | Gửi các trang đã được kiểm tra đến Sản xuất | milestone | 0d | 2015-09-22 | 2015-09-22 | 37 |  |  | 2015-09-15 | 2015-09-15 | 0d | 3.5d | 0.5d |  |  | Phạm Tấn Trung |  |  |  |  |  |
| 39 | 4.3.3 | Đánh giá cuối cùng |  | 5d | 2015-09-24 | 2015-09-30 | 38 |  |  | 2015-09-16 | 2015-09-23 | 5d | 2d |  |  |  | Phạm Tuân; Phạm Tấn Trung [50%]; Nguyễn Văn A [50%]; Bound galley proofs [20 copies] | 80h |  | 4,545 | 4,545 |  |
| 40 | 4.4 | **Trang web đồng hành của sách thiết kế** |  | 10d | 2015-09-14 | 2015-09-25 | 30 |  |  | 2015-09-04 | 2015-09-18 | 10d | 5d |  |  |  |  | 88h |  | 5,834 | 5,834 |  |
| 41 | 4.4.1 | Tạo mô hình |  | 4.5d | 2015-09-14 | 2015-09-23 |  |  |  | 2015-09-04 | 2015-09-16 | 4.5d | 5d | 0d |  |  | Phạm Hoại; Phạm Tấn Trung | 48h |  | 2,610 | 2,610 |  |
| 42 | 4.4.2 | Đánh giá với tác giả |  | 2d | 2015-09-24 | 2015-09-25 | 41 |  |  | 2015-09-16 | 2015-09-18 | 2d | 5d |  |  |  | Phạm Hoại; Nguyễn D; Travel [0.1%]; Nguyễn Văn B [50%] | 40h |  | 3,224 | 3,224 |  |
| 43 | 5 | **Chuẩn bị màu và in ấn** |  | 44d | 2015-10-05 | 2015-12-03 | 40 |  |  | 2015-09-23 | 2015-11-26 | 46d | 0d |  |  |  |  | 328h |  | 5,310 | 5,310 |  |
| 44 | 5.1 | Gửi đến nhà màu |  | 1d | 2015-10-05 | 2015-10-05 | 36 |  |  | 2015-09-23 | 2015-09-28 | 1d | 0d |  |  | Monday-Wednesday | Phạm Tấn Trung | 8h |  | 310 | 310 |  |
| 45 | 5.2 | Tạo bằng chứng |  | 10d | 2015-10-06 | 2015-10-19 | 44 |  |  | 2015-09-28 | 2015-10-12 | 10d | 0d |  |  |  | Dịch vụ thiết lâpj màu | 80h |  | 5,000 | 5,000 |  |
| 46 | 5.3 | In và gửi |  | 30d | 2015-10-23 | 2015-12-03 | 45FS+3d |  |  | 2015-10-15 | 2015-11-26 | 30d | 0d |  |  |  | Dịch vụ in ấn | 240h |  |  |  |  |
| 47 | 6 | **Chuẩn bị ra mắt sách** |  | 22d | 2015-10-06 | 2015-11-04 |  |  |  | 2015-09-28 | 2015-10-28 | 22d | 21d |  |  |  |  | 212h |  | 9,442 | 9,442 |  |
| 48 | 6.1 | Kế hoạch ra mắt |  | 5d | 2015-10-06 | 2015-10-12 | 44 |  |  | 2015-09-28 | 2015-10-05 | 5d | 21d | 0d |  |  | Nguyễn Văn A [50%]; Phạm Tuân | 36h |  | 2,062 | 2,062 |  |
| 49 | 6.2 | Chỉ định các thành viên nhóm ra mắt |  | 1d | 2015-10-13 | 2015-10-13 | 48 |  |  | 2015-10-05 | 2015-10-06 | 1d | 21d | 0d |  |  | Nguyễn Văn A | 8h |  | 420 | 420 |  |
| 50 | 6.3 | Hoàn thành bảng câu hỏi của tác giả |  | 5d | 2015-10-14 | 2015-10-20 | 49 |  |  | 2015-10-06 | 2015-10-13 | 5d | 21d | 0d |  |  | Phạm Tấn Trung; Nguyễn D; Travel [0.1%] | 80h |  | 3,550 | 3,550 |  |
| 51 | 6.4 | Lên lịch phỏng vấn tác giả |  | 1d | 2015-10-21 | 2015-10-21 | 50 |  |  | 2015-10-13 | 2015-10-14 | 1d | 21d | 0d |  |  | Phạm Tấn Trung | 8h |  | 310 | 310 |  |
| 52 | 6.5 | Thiết kế và đặt hàng tài liệu tiếp thị |  | 10d | 2015-10-22 | 2015-11-04 | 51 |  |  | 2015-10-14 | 2015-10-28 | 10d | 21d |  |  |  | Phạm Tấn Trung | 80h |  | 3,100 | 3,100 |  |
