# New Book Launch schedule

Schedule from MS Project, 2015-01-05 to 2015-02-26, status date 2015-01-14, costs in $, A marks actual dates.
New book launch schedule
Lucerne Publishing
New children's book for spring release

## Calendars

- Standard: Mon-Fri 08:00-12:00, 13:00-17:00; Sat-Sun off. Exceptions (off unless hours are given): 2015-01-22 (Staff at morale event).

## Resources

| Resource | Rate | Notes |
| --- | --- | --- |
| Đăng Văn Cao | 42 |  |
| Nguyễn Văn H | 27.5 | Sharons standard pay rate is adjusted for her half-time work schedule. |
| Phạm Khuân | 67.5 | Toby worked on launch campaigns for Toni Poes previous two books. |
| Cao Đức Tài |  |  |
| Đào Văn Lai | 55 |  |
| sửa bản nháp | 45 |  |
| Travel |  |  |
| Nguyễn A | 52.5 |  |
| Phạm Hai | 75.5 |  |
| Nguyẽn Lao | 38.75 |  |
| Phạm Hải | 55 |  |
| Nguyễn Khuyến | 69.5 |  |
| Nguyễn Văn Đồng | 48 |  |
| Đặng Thị Khuyên | 70 |  |
| Dịch vụ in ấn |  |  |
| Cao Văn Hương | 44 |  |
| Lại Văn Lâm | 22 |  |
| Nguyên B |  |  |
| Trần Văn Điện |  |  |
| Tạ Thành Hải |  |  |
| Phạm Tấn Tài |  |  |
| Lại Hữu Diệp |  |  |
| Nguyễn Thúy An |  |  |
| Trương Thanh Mai |  |  |
| Trần Thanh Điện |  |  |
| Võ Anh Kiệt |  |  |
| Nguyễn Bảo Trân |  |  |
| Nguyên Thanh |  |  |

## Schedule

| ID | WBS | Task | Type | Duration | Start | Finish | Predecessors | Complete | Remaining | Baseline start | Baseline finish | Baseline duration | Total slack | Free slack | Resources | Work | Actual work | Cost | Baseline cost |
| --- | --- | --- | --- | --- | --- | --- | --- | --- | --- | --- | --- | --- | --- | --- | --- | --- | --- | --- | --- |
| 1 | 1 | **Giai đoạn lập kế hoạch** |  | 11d | 2015-01-05 A | 2015-01-19 A |  | 100% |  | 2015-01-05 | 2015-01-19 | 11d |  |  |  | 248h | 248h |  |  |
| 2 | 1.1 | Chỉ định các thành viên trong nhóm phát thành |  | 1d | 2015-01-05 A | 2015-01-05 A |  | 100% |  | 2015-01-05 | 2015-01-05 | 1d |  |  | Trần Thanh Điện | 8h | 8h |  |  |
| 3 | 1.2 | Hoàn thành bảng câu hỏi về tác giả |  | 1w | 2015-01-06 A | 2015-01-12 A | 2 | 100% |  | 2015-01-06 | 2015-01-12 | 1w |  |  | Tạ Thành Hải | 40h | 40h |  |  |
| 4 | 1.3 | Lên lịch phỏng vấn tác giả |  | 1w | 2015-01-06 A | 2015-01-12 A | 2 | 100% |  | 2015-01-06 | 2015-01-12 | 1w |  |  | Phạm Tấn Tài | 40h | 40h |  |  |
| 5 | 1.4 | Thiết kế và đặt hàng tài liệu tiếp thị |  | 2w | 2015-01-06 A | 2015-01-19 A | 2 | 100% |  | 2015-01-06 | 2015-01-19 | 2w |  |  | Lại Hữu Diệp; Nguyễn Thúy An | 160h | 160h |  |  |
| 6 | 1.5 | Lập kế hoạch hoàn thành! | milestone | 0d | 2015-01-19 A | 2015-01-19 A | 5 | 100% |  | 2015-01-19 | 2015-01-19 | 0d |  |  |  |  |  |  |  |
| 7 | 2 | **Giai đoạn ra mắt nội bộ** |  | 15d | 2015-01-20 A | 2015-02-10 | 1 | 67% | 5d | 2015-01-20 | 2015-02-06 | 13d | 0d |  |  | 332h | 204h | 880 | 880 |
| 8 | 2.1 | Khởi động cuộc họp ra mắt sách |  | 1d | 2015-01-20 A | 2015-01-20 A |  | 100% |  | 2015-01-20 | 2015-01-20 | 1d |  |  | Trương Thanh Mai [50%]; Nguyễn Thúy An | 12h | 12h |  |  |
| 9 | 2.2 | Soạn báo cáo lời - lỗ về sách |  | 3d | 2015-01-21 A | 2015-01-26 A | 8 | 100% |  | 2015-01-21 | 2015-01-23 | 2d |  |  | Trần Thanh Điện | 24h | 24h |  |  |
| 10 | 2.3 | Lập kế hoạch cho hành trình của tác giả |  | 7d | 2015-01-20 A | 2015-01-29 A | 8 | 100% |  | 2015-01-21 | 2015-01-29 | 6d |  |  | Võ Anh Kiệt | 56h | 56h |  |  |
| 11 | 2.4 | Chuẩn bị kênh bán hàng |  | 7d | 2015-01-21 A | 2015-01-30 A | 8 | 100% |  | 2015-01-21 | 2015-01-28 | 1w |  |  | Nguyễn Thúy An; Nguyễn Bảo Trân | 112h | 112h |  |  |
| 12 | 2.5 | Hoàn thành mẫu ra mắt sách |  | 2d | 2015-02-02 | 2015-02-03 | 11 |  |  | 2015-01-29 | 2015-01-30 | 2d | 5d |  | Lại Hữu Diệp; Nguyên Thanh | 32h |  |  |  |
| 13 | 2.6 | Chuẩn bị bộ dụng cụ bán sách |  | 1w | 2015-02-02 | 2015-02-06 | 8, 11 |  |  | 2015-01-29 | 2015-02-04 | 1w | 0d |  | Nguyễn Bảo Trân; Nguyễn Thúy An | 80h |  |  |  |
| 14 | 2.7 | Phân phối tài liệu tiếp thị nội bộ |  | 2d | 2015-02-09 | 2015-02-10 | 13 |  |  | 2015-02-05 | 2015-02-06 | 2d | 0d |  | Đào Văn Lai | 16h |  | 880 | 880 |
| 15 | 3 | **Giai đoạn ra mắt công chúng** |  | 12d | 2015-02-11 | 2015-02-26 | 7 |  |  | 2015-02-09 | 2015-02-24 | 12d | 0d |  | Nguyễn Văn H [50%] | 336h |  | 14,892 | 14,892 |
| 16 | 3.1 | **Chuyến đi và sự xuất hiện của tác giả** |  | 2d | 2015-02-11 | 2015-02-12 |  |  |  | 2015-02-09 | 2015-02-10 | 2d | 10d |  | Nguyễn Văn H [50%] | 24h |  | 1,020 | 1,020 |
| 17 | 3.1.1 | Phỏng vấn đài phát thanh tác giả |  | 1d | 2015-02-11 | 2015-02-11 |  |  |  | 2015-02-09 | 2015-02-09 | 1d | 10d | 0d | Cao Đức Tài | 8h |  |  |  |
| 18 | 3.1.2 | Tác giả đọc và ký tặng tại hội chợ sách |  | 1d | 2015-02-12 | 2015-02-12 | 17 |  |  | 2015-02-10 | 2015-02-10 | 1d | 10d |  | Cao Đức Tài; Travel [0.1%] | 8h |  | 800 | 800 |
| 19 | 3.2 | Phân phối bản sao trước |  | 2d | 2015-02-11 | 2015-02-12 |  |  |  | 2015-02-09 | 2015-02-10 | 2d | 10d |  | Phạm Khuân; Lại Văn Lâm | 32h |  | 1,432 | 1,432 |
| 20 | 3.3 | Phân phối bộ dụng cụ bán sách |  | 2d | 2015-02-11 | 2015-02-12 |  |  |  | 2015-02-09 | 2015-02-10 | 2d | 0d |  | Đào Văn Lai | 16h |  | 880 | 880 |
| 21 | 3.4 | Phối hợp các bài viết nổi bật trên tạp chí |  | 7d | 2015-02-13 | 2015-02-23 | 20 |  |  | 2015-02-11 | 2015-02-19 | 7d | 3d |  | Đào Văn Lai | 56h |  | 3,080 | 3,080 |
| 22 | 3.5 | Ra mắt cổng thông tin web công cộng cho sách |  | 1w | 2015-02-13 | 2015-02-19 | 20 |  |  | 2015-02-11 | 2015-02-17 | 1w | 0d |  | Phạm Khuân; Lại Văn Lâm | 80h |  | 3,580 | 3,580 |
| 23 | 3.6 | Ra mắt chương trình truyền thông xã hội cho sách |  | 1w | 2015-02-20 | 2015-02-26 | 22 |  |  | 2015-02-18 | 2015-02-24 | 1w | 0d |  | Phạm Khuân; Lại Văn Lâm | 80h |  | 3,580 | 3,580 |
| 24 | 3.7 | Ra mắt hoàn tất! | milestone | 0d | 2015-02-26 | 2015-02-26 | 21, 22, 23 |  |  | 2015-02-24 | 2015-02-24 | 0d | 0d |  |  |  |  |  |  |

Notes:
- 19: Get recipient list from publicist
